# Scientific_Calculator

Schedule from MS Project, 2018-05-08 to 2018-06-06, 7 hours a day, A marks actual dates.
Planification de la réalisation d'une calculatrice scientifique
CPNV

## Calendars

- Standard: Mon 09:50-12:05, 13:30-15:00, 15:15-16:05; Tue 08:00-09:30, 09:50-12:10, 13:30-15:00, 15:20-16:50; Wed 08:00-09:30, 09:50-12:05, 13:30-15:00, 15:20-16:05; Thu 09:50-12:05, 13:30-15:00, 15:20-16:50; Fri-Sun off. Exceptions (off unless hours are given): 2018-05-10 to 2018-05-11 (Pont de l'Ascension), 2018-05-21 (lundi de Pentecôte).

## Schedule

| ID | WBS | Task | Type | Duration | Start | Finish | Predecessors | Complete | Remaining | Total slack | Free slack | Work | Actual work |
| --- | --- | --- | --- | --- | --- | --- | --- | --- | --- | --- | --- | --- | --- |
| 1 | 1 | **Totalité du projet** |  | 12.86d? | 2018-05-08 09:00 A | 2018-06-06 11:40 |  | 13% | 11.24d? | 0d |  | 154.75h | 20.75h |
| 2 | 1.1 | Rédaction de la Planification initiale |  | 2h | 2018-05-08 09:00 A | 2018-05-08 11:20 A |  | 100% |  |  |  | 2h | 2h |
| 3 | 1.2 | **Analyse** |  | 1.96d | 2018-05-08 11:20 A | 2018-05-14 15:25 |  | 83% | 0.34d | 10.61d |  | 14.75h | 13.25h |
| 4 | 1.2.1 | Création des Use Cases |  | 2h | 2018-05-08 11:20 A | 2018-05-08 14:40 A | 2 | 100% |  |  |  | 2h | 2h |
| 5 | 1.2.2 | Création des maquettes et de l'interface graphique essentielle |  | 4.5h | 2018-05-08 14:40 A | 2018-05-09 11:00 | 4 | 85% | 0.65h | 0.5d | 0d | 5h | 4.5h |
| 6 | 1.2.3 | Création des scénarii |  | 5.75h | 2018-05-09 10:30 A | 2018-05-14 11:45 | 5 | 70% | 1.75h | 10.89d |  | 6h | 5h |
| 7 | 1.2.4 | Création du Modèle Conceptuel de Données |  | 1h | 2018-05-14 10:00 A | 2018-05-14 11:00 A | 6 | 100% |  |  |  | 1h | 1h |
| 8 | 1.2.5 | Création de Modèle Logique de Données |  | 0.75h | 2018-05-14 14:25 A | 2018-05-14 15:25 A | 7 | 100% |  |  |  | 0.75h | 0.75h |
| 9 | 1.3 | Documentation de l'analyse |  | 5.25h | 2018-05-15 08:35 A | 2018-05-15 15:50 | 8 | 86% | 0.75h | 0.29d | 0d | 4.75h | 4.5h |
| 10 | 1.4 | **Implémentation & tests** |  | 5d | 2018-05-15 15:50 A | 2018-05-29 08:05 |  | 3% | 4.85d | 3.75d |  | 33.25h | 1h |
| 11 | 1.4.1 | Implémentation des classes et des méthodes vides |  | 2.25h | 2018-05-15 15:50 | 2018-05-16 09:15 | 9 |  |  | 0.36d | 0d |  |  |
| 12 | 1.4.2 | Implémentation de la base de données |  | 1h | 2018-05-16 09:15 | 2018-05-16 10:35 | 11 |  |  | 0.36d | 0.21d | 2h |  |
| 13 | 1.4.3 | Implémentation et tests de la saisie de l'utilisateur |  | 0.5h | 2018-05-16 10:35 | 2018-05-16 11:05 | 12 |  |  | 0.29d | 0.14d |  |  |
| 14 | 1.4.4 | Implémentation de la classe de calcul avec des calculs simples |  | 2.75h | 2018-05-16 13:30 A | 2018-05-17 10:20 | 13 | 36% | 1.75h | 2.25d | 0d | 4h | 1h |
| 15 | 1.4.5 | Tests de la classe de calcul |  | 2.5h | 2018-05-17 10:20 | 2018-05-17 14:15 | 14 |  |  | 0.96d | 0d | 2h |  |
| 16 | 1.4.6 | Implémentation des calculs avancés |  | 2h | 2018-05-17 14:15 | 2018-05-17 16:35 | 15 |  |  | 3.75d | 0d | 2.75h |  |
| 17 | 1.4.7 | Tests des calculs avancés |  | 4.25h | 2018-05-17 16:35 | 2018-05-22 13:40 | 16 |  |  | 3.75d | 0d | 3.5h |  |
| 18 | 1.4.8 | Implémentation de l'historique des opérations |  | 1.25h | 2018-05-22 13:40 | 2018-05-22 14:55 | 17 |  |  | 3.75d | 0d | 1.25h |  |
| 19 | 1.4.9 | Tests de l'historique des opérations |  | 0.5h | 2018-05-22 14:55 | 2018-05-22 15:45 | 18 |  |  | 3.75d | 0d | 0.5h |  |
| 20 | 1.4.10 | Implémentation de l'utilisation des constantes |  | 0.5h | 2018-05-22 15:45 | 2018-05-22 16:15 | 19 |  |  | 3.75d | 0d | 0.5h |  |
| 21 | 1.4.11 | Tests de l'utilisation des constantes |  | 0.25h | 2018-05-22 16:15 | 2018-05-22 16:30 | 20 |  |  | 3.75d | 0d | 0.25h |  |
| 22 | 1.4.12 | Implémentation de la conversion de base numérique |  | 1.25h | 2018-05-22 16:30 | 2018-05-23 08:55 | 21 |  |  | 3.75d | 0d | 1.25h |  |
| 23 | 1.4.13 | Tests de la conversion de base numérique |  | 0.25h | 2018-05-23 08:55 | 2018-05-23 09:10 | 22 |  |  | 3.75d | 0d | 0.25h |  |
| 24 | 1.4.14 | Implémentation de l'affichage d'un graphe |  | 6h | 2018-05-23 09:10 | 2018-05-24 11:00 | 23 |  |  | 3.75d | 0d | 7h |  |
| 25 | 1.4.15 | Tests de l'affichage de graphe |  | 2h | 2018-05-24 11:00 | 2018-05-24 14:25 | 24 |  |  | 3.75d | 0d | 2h |  |
| 26 | 1.4.16 | Implémentation de la modification des paramètres |  | 3h | 2018-05-24 14:25 | 2018-05-28 10:45 | 25 |  |  | 3.75d | 0d | 4h |  |
| 27 | 1.4.17 | Tests de la modification des paramètres |  | 0.75h | 2018-05-28 10:45 | 2018-05-28 11:30 | 26 |  |  | 3.75d | 0d | 1h |  |
| 28 | 1.4.18 | Modifications selon les tests client |  | 3h | 2018-05-28 11:30 | 2018-05-29 08:05 | 27 |  |  | 3.75d | 0d | 1h |  |
| 29 | 1.5 | Documentation de la réalisation |  | 1.5h | 2018-05-29 08:05 | 2018-05-29 09:55 | 28 |  |  | 3.75d | 0d | 5h |  |
| 30 | 1.6 | Documentation finale |  | 5h | 2018-05-29 09:55 | 2018-05-29 16:35 | 29 |  |  | 3.75d |  | 5h |  |
| 31 | 1.7 | Documentation continue | manual | 90h | 2018-05-08 09:00 A | 2018-06-06 11:40 |  |  | 90h |  |  | 90h |  |
